Schedule from MS Project XML, 2021-06-22 to 2022-01-17.

## Calendars

- Standard[Imported][Imported][Imported]: Mon-Fri 08:00-12:00, 13:00-17:00; Sat-Sun off.

## Resources

| Resource |
| --- |
| Unassigned |
| Peter |
| George |
| External |

## Schedule

| ID | WBS | Task | Type | Duration | Start | Finish | Predecessors | Complete | Constraint | Resources |
| --- | --- | --- | --- | --- | --- | --- | --- | --- | --- | --- |
| 1 | 1 | **External milestones** |  | 20d | 2021-07-05 | 2021-07-30 |  |  |  |  |
| 2 | 1.1 | Motor Arrives | milestone | 20d | 2021-07-05 | 2021-07-30 |  |  |  | External |
| 3 | 1.2 | VCU Arrives | milestone | 0d | 2021-07-05 | 2021-07-05 |  | 100% |  | External |
| 4 | 2 | **Project Milestones** |  | 119d | 2021-08-03 | 2022-01-17 |  |  |  |  |
| 5 | 2.1 | M1: Motor Spin | milestone | 0d | 2021-08-03 | 2021-08-03 | 20 |  |  |  |
| 6 | 2.2 | Motor Fitted | milestone | 0d | 2021-10-25 | 2021-10-25 | 21 |  |  |  |
| 7 | 2.4 | Battery Design | milestone | 0d | 2021-09-10 | 2021-09-10 | 36 |  |  |  |
| 8 | 2.5 | Auxiliary Equipment | milestone | 0d | 2021-08-12 | 2021-08-12 | 50 |  |  |  |
| 9 | 2.6 | Charging System | milestone | 0d | 2021-08-09 | 2021-08-09 | 64 |  |  |  |
| 10 | 2.7 | Functional Battery Pack | milestone | 0d | 2022-01-04 | 2022-01-04 | 70 |  |  |  |
| 11 | 2.8 | Engineering Approval | milestone | 0d | 2022-01-12 | 2022-01-12 | 87 |  |  |  |
| 12 | 2.9 | Registered Vehicle | milestone | 0d | 2022-01-17 | 2022-01-17 | 90 |  |  |  |
| 13 | 4 | **Motor Spinning Prep** |  | 30d | 2021-06-22 | 2021-08-02 |  | 81% |  |  |
| 14 | 4.1 | Bench PSU (340v) |  | 14d | 2021-06-22 | 2021-07-09 |  | 100% |  | Peter |
| 15 | 4.2 | VCU setup |  | 1d | 2021-07-05 | 2021-07-05 | 3 | 90% |  | George |
| 16 | 4.3 | 12v PSU setup |  | 0d | 2021-07-05 | 2021-07-05 |  | 100% |  | George |
| 17 | 4.4 | Bench and location |  | 2d | 2021-06-22 | 2021-06-23 |  | 25% |  | George |
| 18 | 4.5 | Remove existing Controller |  | 1d | 2021-08-02 | 2021-08-02 | 2 |  |  | George |
| 19 | 4.6 | Coolant Pump setup |  | 1d | 2021-08-02 | 2021-08-02 | 2, 16 |  |  | George |
| 20 | 5 | Motor Spin Assemble and Test |  | 1d | 2021-08-03 | 2021-08-03 | 2, 3, 13 |  |  | George; Peter |
| 21 | 6 | **Fit Motor** |  | 90d | 2021-06-22 | 2021-10-25 |  | 3% |  |  |
| 22 | 5.1 | Study relevant legislation |  | 2d | 2021-07-05 | 2021-07-06 |  |  |  |  |
| 23 | 6.1 | Expore mounting and coupling ideas |  | 10d | 2021-08-13 | 2021-08-26 | 2, 30 |  |  |  |
| 24 | 6.5 | Design coupling and mounts |  | 5d | 2021-08-27 | 2021-09-02 | 22, 23 |  |  |  |
| 25 | 5.4 | Get engineering approval |  | 2d | 2021-09-03 | 2021-09-06 | 24, 88 |  |  |  |
| 26 | 6.2 | Fabricate components |  | 14d | 2021-09-07 | 2021-09-24 | 24, 25 |  |  |  |
| 27 | 5.6 | Design weight distribution measurement rig |  | 2d | 2021-06-22 | 2021-06-23 |  | 100% |  |  |
| 28 | 5.7 | Build weight distribution measurment rig |  | 1d | 2021-07-05 | 2021-07-05 | 27 |  |  |  |
| 29 | 5.8 | Measure weight distribution |  | 1d | 2021-07-06 | 2021-07-06 | 28 |  |  |  |
| 30 | 5.9 | Remove ICE components |  | 2d | 2021-08-11 | 2021-08-12 | 29 |  | as late as possible |  |
| 31 | 5.10 | Measure weight distribution with no components |  | 1d | 2021-08-13 | 2021-08-13 | 30 |  |  |  |
| 32 | 6.3 | Mount the motor |  | 10d | 2021-09-27 | 2021-10-08 | 26, 31 |  |  |  |
| 33 | 6.4 | Test in place |  | 1d | 2021-10-11 | 2021-10-11 | 32, 20 |  |  |  |
| 34 | 5.13 | Resolve issues from testing |  | 10d | 2021-10-12 | 2021-10-25 | 33 |  |  |  |
| 35 | 5.14 | Re-measure weight distribution |  | 1d | 2021-10-11 | 2021-10-11 | 32 |  |  |  |

| ID | WBS | Task | Duration | Start | Finish | Predecessors | Resources |
| --- | --- | --- | --- | --- | --- | --- | --- |
| 36 | 7 | **Design Battery** | 50d | 2021-07-05 | 2021-09-10 |  |  |
| 37 | 6.1 | Research cell chemistry and format | 5d | 2021-07-05 | 2021-07-09 |  |  |
| 38 | 7.1 | Research mechanical structure (modules) | 5d | 2021-07-05 | 2021-07-09 |  |  |
| 39 | 7.2 | Research physical distribution in vehicle | 5d | 2021-07-05 | 2021-07-09 |  |  |
| 40 | 6.4 | **Detailed battery design** | 20d | 2021-08-16 | 2021-09-10 | 31, 37, 38, 39 |  |
| 41 | 6.4.1 | Design battery | 15d | 2021-08-16 | 2021-09-03 |  |  |
| 42 | 6.4.2 | Design battery mounting | 5d | 2021-09-06 | 2021-09-10 | 41 |  |
| 43 | 6.4.3 | Get engineering approval | 2d | 2021-08-16 | 2021-08-17 | 88 |  |
| 44 | 11.2 | Design BMS | 5d | 2021-07-12 | 2021-07-16 | 37 |  |
| 45 | 7.3 | **Design Battery Cooling** | 45d | 2021-07-12 | 2021-09-10 |  |  |
| 46 | 7.3.1 | Initial Designs | 5d | 2021-07-12 | 2021-07-16 | 37, 38 |  |
| 47 | 7.3.2 | Modelling/prototyping | 20d | 2021-07-19 | 2021-08-13 | 46 |  |
| 48 | 7.3.3 | Model/prototype evaluation | 5d | 2021-08-16 | 2021-08-20 | 47 |  |
| 49 | 7.3.4 | Iteration | 15d | 2021-08-23 | 2021-09-10 | 48 |  |
| 50 | 9 | **Construct and Mount Aux Equipment** | 27d? | 2021-07-07 | 2021-08-12 | 22 |  |
| 51 | 9.2 | **12V System** | 22d | 2021-07-07 | 2021-08-05 |  |  |
| 52 | 9.2.1 | Explore DC/DC charger options | 2d | 2021-07-07 | 2021-07-08 |  |  |
| 53 | 7.1.2 | Procure DC/DC charger | 15d | 2021-07-09 | 2021-07-29 | 52 | External |
| 54 | 7.1.3 | Install DC/DC charger | 5d | 2021-07-30 | 2021-08-05 | 53 |  |
| 55 | 7.2 | **Speedometer sytem** | 9d | 2021-07-07 | 2021-07-19 |  |  |
| 56 | 7.2.1 | Understand current speedo design | 1d | 2021-07-07 | 2021-07-07 |  |  |
| 57 | 7.2.2 | Design replacement system | 3d | 2021-07-08 | 2021-07-12 | 56 |  |
| 58 | 7.2.3 | Build/install replacement system | 5d | 2021-07-13 | 2021-07-19 | 57 |  |
| 59 | 9.1 | **Vacuum System** | 27d? | 2021-07-07 | 2021-08-12 |  |  |
| 60 | 9.1.1 | Explore OEM vacuum brake pump options | 2d | 2021-07-07 | 2021-07-08 | 22 |  |
| 61 | 7.3.2 | Get engineering approval | 1d? | 2021-07-12 | 2021-07-12 | 88 |  |
| 62 | 7.3.3 | Procure brake pump | 15d | 2021-07-13 | 2021-08-02 | 60, 61 | External |
| 63 | 7.3.4 | Install brake pump | 5d | 2021-08-06 | 2021-08-12 | 51, 62 |  |

| ID | WBS | Task | Duration | Start | Finish | Predecessors | Resources |
| --- | --- | --- | --- | --- | --- | --- | --- |
| 64 | 10 | **Construct and Install Battery Charger** | 26d | 2021-07-05 | 2021-08-09 |  |  |
| 65 | 8.1 | Research options | 5d | 2021-07-05 | 2021-07-09 |  |  |
| 66 | 10.1 | Source components and materials | 15d | 2021-07-12 | 2021-07-30 | 65 | External |
| 67 | 10.2 | Build | 3d | 2021-08-02 | 2021-08-04 | 66 |  |
| 68 | 10.3 | Install | 2d | 2021-08-05 | 2021-08-06 | 67 |  |
| 69 | 10.4 | Test | 1d | 2021-08-09 | 2021-08-09 | 68 |  |
| 70 | 11 | **Construct and Install Final Battery Pack** | 82d | 2021-09-13 | 2022-01-04 | 36 |  |
| 71 | 11.1 | Source Components and materials | 30d | 2021-09-13 | 2021-10-22 |  | External |
| 72 | 11.5 | Build Modules | 30d | 2021-10-25 | 2021-12-03 | 71, 44 |  |
| 73 | 13.2 | **Test jig** | 15d | 2021-12-06 | 2021-12-24 | 72 |  |
| 74 | 9.3.1 | Design test jig | 10d | 2021-12-06 | 2021-12-17 |  |  |
| 75 | 9.3.2 | Build test jig | 5d | 2021-12-20 | 2021-12-24 | 74 |  |
| 76 | 9.4 | Test modules | 5d | 2021-12-27 | 2021-12-31 | 72, 73 |  |
| 77 | 9.5 | Construct mounting | 20d | 2021-09-13 | 2021-10-08 |  |  |
| 78 | 11.3 | Install | 5d | 2021-12-27 | 2021-12-31 | 73, 77 |  |
| 79 | 11.4 | Installed battery testing | 2d | 2022-01-03 | 2022-01-04 | 78 |  |
| 80 | 10 | **Vehicle Testing** | 1d | 2022-01-05 | 2022-01-05 | 70 |  |
| 81 | 10.1 | Basic drive | 1d | 2022-01-05 | 2022-01-05 |  |  |
| 82 | 10.2 | Range test | 1d | 2022-01-05 | 2022-01-05 |  |  |
| 83 | 10.3 | Speed/power test | 1d | 2022-01-05 | 2022-01-05 |  |  |
| 84 | 10.4 | Temperature testing | 1d | 2022-01-05 | 2022-01-05 |  |  |
| 85 | 10.5 | 4WD test | 1d | 2022-01-05 | 2022-01-05 |  |  |
| 86 | 10.6 | Compliance test | 1d | 2022-01-05 | 2022-01-05 |  |  |
| 87 | 12 | **Get Engineering Approval** | 138d | 2021-07-05 | 2022-01-12 |  |  |
| 88 | 12.1 | Find a suitable engineer | 5d | 2021-07-05 | 2021-07-09 |  |  |
| 89 | 11.2 | Present car with evidence of compliance with legislation | 5d | 2022-01-06 | 2022-01-12 | 80, 88 |  |

| ID | WBS | Task | Duration | Start | Finish | Predecessors |
| --- | --- | --- | --- | --- | --- | --- |
| 90 | 13 | **Register the vehicle** | 3d | 2022-01-13 | 2022-01-17 | 87 |
| 91 | 13.1 | Go over pits | 1d | 2022-01-13 | 2022-01-13 | 87 |
| 92 | 12.2 | Get plates from DOT | 1d | 2022-01-14 | 2022-01-14 | 91 |
| 93 | 12.3 | Install plates | 1d | 2022-01-17 | 2022-01-17 | 92 |
